# D:\Developpements\DiamantExtreme\Document\Planification\Dx

Schedule from MS Project, 2003-05-12 to 2003-12-12, A marks actual dates.
Universite Sherbrooke

## Calendars

- Standard: Mon-Fri 08:00-12:00, 13:00-17:00; Sat-Sun off.

## Resources

| Resource |
| --- |
| Alex |
| Ruben |
| Yannick |

## Schedule

| ID | WBS | Task | Type | Duration | Start | Finish | Predecessors | Complete | Baseline start | Baseline finish | Baseline duration | Total slack | Constraint | Deadline | Resources | Work | Actual work |
| --- | --- | --- | --- | --- | --- | --- | --- | --- | --- | --- | --- | --- | --- | --- | --- | --- | --- |
| 1 | 1 | Début | milestone | 0d | 2003-05-12 | 2003-05-12 |  |  | 2003-05-12 | 2003-05-12 | 0d | 150d | start no earlier than 2003-05-12 |  |  |  |  |
| 2 | 2 | **Livrable 1 Vérification de données** |  | 9d | 2003-05-12 A | 2003-05-22 A | 1 | 100% | 2003-05-12 | 2003-05-22 | 9d |  |  |  |  |  |  |
| 3 | 2.1 | Definir fichiers à importer |  | 2d | 2003-05-12 A | 2003-05-13 A |  | 100% | 2003-05-12 | 2003-05-13 | 2d |  |  | 2003-05-28 |  |  |  |
| 4 | 2.2 | Importer données |  | 2d | 2003-05-14 A | 2003-05-15 A | 3 | 100% | 2003-05-14 | 2003-05-15 | 2d |  |  |  |  |  |  |
| 5 | 2.3 | Vérification fichier |  | 5d | 2003-05-16 A | 2003-05-22 A | 4 | 100% | 2003-05-16 | 2003-05-22 | 5d |  | start no earlier than 2003-05-22 |  |  |  |  |
| 6 | 2.4 | Fin Livrable 1 | milestone | 0d | 2003-05-22 A | 2003-05-22 A | 5 | 100% | 2003-05-22 | 2003-05-22 | 0d |  |  |  |  |  |  |
| 7 | 3 | **Librable 2 Menu Fichier** |  | 36d? | 2003-05-23 A | 2003-07-14 A | 5 | 100% | 2003-05-23 | 2003-06-17 | 17.5d? |  |  |  |  | 480h | 480h |
| 8 | 3.1 | Menu Nouveau Exam |  | 1d? | 2003-05-23 A | 2003-05-23 A |  | 100% | 2003-05-23 | 2003-05-26 | 2d? |  |  |  | Ruben | 8h | 8h |
| 9 | 3.2 | Menu Nouveau Cycle |  | 1d | 2003-05-26 A | 2003-05-26 A |  | 100% | 2003-05-27 | 2003-05-28 | 2d? |  |  |  | Ruben | 8h | 8h |
| 10 | 3.3 | Grille Horaire TTPanel |  | 5d | 2003-05-29 A | 2003-06-04 A | 9 | 100% | 2003-05-29 | 2003-05-30 | 2d? |  |  |  | Ruben | 40h | 40h |
| 11 | 3.4 | Menu Open |  | 1d | 2003-05-27 A | 2003-05-27 A | 10 | 100% | 2003-06-02 | 2003-06-03 | 2d? |  |  |  | Ruben | 8h | 8h |
| 12 | 3.5 | Actions Open |  | 1d | 2003-06-02 A | 2003-06-02 A | 11 | 100% | 2003-06-04 | 2003-06-05 | 2d? |  |  |  | Ruben | 8h | 8h |
| 13 | 3.6 | Menu Fermer + Close Win |  | 1d | 2003-06-04 A | 2003-06-04 A |  | 100% | 2003-06-06 | 2003-06-09 | 2d? |  |  |  | Ruben | 8h | 8h |
| 14 | 3.7 | Menu sauvegarde |  | 1d | 2003-05-23 A | 2003-05-23 A |  | 100% | 2003-05-23 | 2003-05-26 | 2d? |  |  |  | Alex | 8h | 8h |
| 15 | 3.8 | Menu sauvegarde sous |  | 1d | 2003-05-27 A | 2003-05-27 A | 14 | 100% | 2003-05-27 | 2003-05-28 | 2d? |  |  |  | Alex | 8h | 8h |
| 16 | 3.9 | Action sauvegarde |  | 1d? | 2003-05-28 A | 2003-05-28 A | 15 | 100% | 2003-05-29 | 2003-05-30 | 2d? |  |  |  | Alex | 8h | 8h |
| 17 | 3.10 | Lire/Écrire XML |  | 5d? | 2003-05-23 A | 2003-05-29 A |  | 100% | 2003-05-23 | 2003-05-29 | 5d? |  |  |  | Yannick | 40h | 40h |
| 18 | 3.11 | Lire/Écrire Grille horaire |  | 3d | 2003-05-30 A | 2003-06-03 A | 17 | 100% | 2003-05-30 | 2003-06-03 | 3d |  |  |  | Yannick | 24h | 24h |
| 19 | 3.12 | Construction TTStructure |  | 5d | 2003-06-04 A | 2003-06-10 A | 18 | 100% | 2003-06-04 | 2003-06-05 | 2d? |  |  |  | Yannick | 40h | 40h |
| 20 | 3.13 | Test de TTStructure |  | 8d | 2003-06-26 A | 2003-07-11 A | 19 | 100% |  |  |  |  |  |  | Yannick | 64h | 64h |
| 21 | 3.14 | Menu Nouvelle grille horaire |  | 1d | 2003-06-05 A | 2003-06-05 A |  | 100% | 2003-06-10 | 2003-06-11 | 2d |  |  |  | Ruben | 8h | 8h |
| 22 | 3.15 | Modif Ddocument |  | 4d | 2003-05-26 A | 2003-05-29 A |  | 100% |  |  |  |  |  |  | Alex | 32h | 32h |
| 23 | 3.16 | Actions Nouvelle grille |  | 5d | 2003-06-18 A | 2003-06-30 A |  | 100% | 2003-06-06 | 2003-06-11 | 4d |  |  |  | Yannick | 40h | 40h |
| 24 | 3.17 | Menu Modifier grille horaire |  | 3d | 2003-06-06 A | 2003-06-10 A |  | 100% | 2003-06-12 | 2003-06-13 | 2d |  |  |  | Ruben | 24h | 24h |
| 25 | 3.18 | Save grille horaire |  | 4d | 2003-06-11 A | 2003-06-16 A | 24 | 100% | 2003-06-16 | 2003-06-17 | 1.5d |  |  |  | Ruben | 32h | 32h |
| 26 | 3.19 | Tool bar modif grille |  | 3d? | 2003-05-29 A | 2003-06-02 A | 22 | 100% | 2003-06-02 | 2003-06-06 | 5d? |  | start no earlier than 2003-07-15 |  | Alex | 24h | 24h |
| 27 | 3.20 | Actions Toolbar |  | 6d? | 2003-06-03 A | 2003-06-10 A | 26 | 100% | 2003-06-09 | 2003-06-13 | 5d? |  |  |  | Alex | 48h | 48h |
| 28 | 3.21 | Fin Livrable 2 | milestone | 0d | 2003-07-14 A | 2003-07-14 A | 25, 23, 27, 20 | 100% | 2003-06-17 | 2003-06-17 | 0d |  | start no earlier than 2003-07-11 | 2003-07-15 |  |  |  |

| ID | WBS | Task | Duration | Start | Finish | Predecessors | Complete | Remaining | Baseline start | Baseline finish | Baseline duration | Total slack | Free slack | Resources | Work | Actual work |
| --- | --- | --- | --- | --- | --- | --- | --- | --- | --- | --- | --- | --- | --- | --- | --- | --- |
| 29 | 4 | **Livrable 3 Horaire Manuel sans aide** | 62d? | 2003-07-14 A | 2003-10-07 | 28 | 43% | 35.54d? | 2003-06-17 | 2003-07-25 | 28d | 48d |  |  | 888h | 448h |
| 30 | 4.1 | Révision de spécs, Planif | 2d | 2003-07-14 A | 2003-07-15 A |  | 100% |  |  |  |  |  |  | Alex; Ruben; Yannick | 48h | 48h |
| 31 | 4.2 | **Menu Activites** | 6d? | 2003-07-17 A | 2003-07-24 A | 30 | 100% |  |  |  |  |  |  |  | 80h | 80h |
| 32 | 4.2.1 | Dialogue | 3d? | 2003-07-17 A | 2003-07-21 A |  | 100% |  |  |  |  |  |  | Alex; Yannick | 48h | 48h |
| 33 | 4.2.2 | Actions | 2d? | 2003-07-22 A | 2003-07-24 A | 32 | 100% |  |  |  |  |  |  | Alex; Yannick | 32h | 32h |
| 34 | 4.3 | **Adaptation disponibilite-grille** | 12d? | 2003-07-25 A | 2003-08-11 A | 31 | 100% |  |  |  |  |  |  |  | 32h | 32h |
| 35 | 4.3.1 | Codage | 1d? | 2003-07-25 A | 2003-07-25 A |  | 100% |  |  |  |  |  |  | Alex; Yannick | 16h | 16h |
| 36 | 4.3.2 | Test | 1d? | 2003-08-11 A | 2003-08-11 A | 35 | 100% |  |  |  |  |  |  | Alex; Yannick | 16h | 16h |
| 37 | 4.4 | **SetOfEvents** | 10d? | 2003-08-18 A | 2003-08-29 | 70 | 75% | 2.5d? |  |  |  | 25d | 1d |  | 64h | 48h |
| 38 | 4.4.1 | Construction | 6d | 2003-08-18 A | 2003-08-26 A |  | 100% |  |  |  |  |  |  | Yannick | 48h | 48h |
| 39 | 4.4.2 | Test | 2d? | 2003-08-28 | 2003-08-29 | 38 |  |  |  |  |  | 25d |  | Yannick | 16h |  |
| 40 | 4.5 | **Matrice conflits étudiants** | 4d? | 2003-09-02 | 2003-09-05 | 37 |  |  |  |  |  | 24d | 0d |  | 24h |  |
| 41 | 4.5.1 | Construction | 2d? | 2003-09-02 | 2003-09-04 |  |  |  |  |  |  | 23d | 0d | Yannick | 16h |  |
| 42 | 4.5.2 | Test | 1d? | 2003-09-05 | 2003-09-05 | 41 |  |  |  |  |  | 24d |  | Yannick | 8h |  |
| 43 | 4.6 | **Matrice de groupes** | 2d? | 2003-09-08 | 2003-09-09 | 40 |  |  |  |  |  | 24d | 1d |  | 16h |  |
| 44 | 4.6.1 | Construction | 1d? | 2003-09-08 | 2003-09-08 |  |  |  |  |  |  | 24d | 0d | Yannick | 8h |  |
| 45 | 4.6.2 | Test | 1d? | 2003-09-09 | 2003-09-09 | 44 |  |  |  |  |  | 25d |  | Yannick | 8h |  |
| 46 | 4.7 | **Affectation événement** | 2d? | 2003-09-11 | 2003-09-12 | 43 |  |  |  |  |  | 25d | 0d |  | 16h |  |
| 47 | 4.7.1 | Construction | 1d? | 2003-09-11 | 2003-09-11 |  |  |  |  |  |  | 25d | 0d | Yannick | 8h |  |
| 48 | 4.7.2 | Test | 1d? | 2003-09-12 | 2003-09-12 | 47 |  |  |  |  |  | 25d |  | Yannick | 8h |  |
| 49 | 4.8 | **Recherche Conflits étudiants** | 2d? | 2003-09-15 | 2003-09-16 | 46 |  |  |  |  |  | 25d | 1d |  | 16h |  |
| 50 | 4.8.1 | Construction | 1d? | 2003-09-15 | 2003-09-15 |  |  |  |  |  |  | 25d | 0d | Yannick | 8h |  |
| 51 | 4.8.2 | Test | 1d? | 2003-09-16 | 2003-09-16 | 50 |  |  |  |  |  | 25d |  | Yannick | 8h |  |
| 52 | 4.9 | **Recherche Conflits locaux** | 2d? | 2003-09-18 | 2003-09-19 | 49 |  |  |  |  |  | 25d | 0d |  | 16h |  |
| 53 | 4.9.1 | Construction | 1d? | 2003-09-18 | 2003-09-18 |  |  |  |  |  |  | 25d | 0d | Yannick | 8h |  |
| 54 | 4.9.2 | Test | 1d? | 2003-09-19 | 2003-09-19 | 53 |  |  |  |  |  | 25d |  | Yannick | 8h |  |

| ID | WBS | Task | Duration | Start | Finish | Predecessors | Complete | Remaining | Baseline start | Baseline finish | Baseline duration | Total slack | Free slack | Resources | Work | Actual work |
| --- | --- | --- | --- | --- | --- | --- | --- | --- | --- | --- | --- | --- | --- | --- | --- | --- |
| 55 | 4.10 | **Recherche Conflits enseignants** | 2d? | 2003-09-22 | 2003-09-23 | 52 |  |  |  |  |  | 25d | 1d |  | 16h |  |
| 56 | 4.10.1 | Construction | 1d? | 2003-09-22 | 2003-09-22 |  |  |  |  |  |  | 25d | 0d | Yannick | 8h |  |
| 57 | 4.10.2 | Test | 1d? | 2003-09-23 | 2003-09-23 | 56 |  |  |  |  |  | 25d |  | Yannick | 8h |  |
| 58 | 4.11 | **Balancement de groupes** | 2d? | 2003-09-25 | 2003-09-26 | 55 |  |  |  |  |  | 25d | 0d |  | 16h |  |
| 59 | 4.11.1 | Construction | 1d? | 2003-09-25 | 2003-09-25 |  |  |  |  |  |  | 25d | 0d | Yannick | 8h |  |
| 60 | 4.11.2 | Test | 1d? | 2003-09-26 | 2003-09-26 | 59 |  |  |  |  |  | 25d |  | Yannick | 8h |  |
| 61 | 4.12 | **Affectation initiale** | 2d? | 2003-09-29 | 2003-09-30 | 58 |  |  |  |  |  | 25d | 1d |  | 16h |  |
| 62 | 4.12.1 | Construction | 1d? | 2003-09-29 | 2003-09-29 |  |  |  |  |  |  | 25d | 0d | Yannick | 8h |  |
| 63 | 4.12.2 | Test | 1d? | 2003-09-30 | 2003-09-30 | 62 |  |  |  |  |  | 25d |  | Yannick | 8h |  |
| 64 | 4.13 | **Amélioration manuelle** | 2d? | 2003-10-02 | 2003-10-03 | 61 |  |  |  |  |  | 25d | 0d |  | 16h |  |
| 65 | 4.13.1 | Construction | 1d? | 2003-10-02 | 2003-10-02 |  |  |  |  |  |  | 25d | 0d | Yannick | 8h |  |
| 66 | 4.13.2 | Test | 1d? | 2003-10-03 | 2003-10-03 | 65 |  |  |  |  |  | 25d |  | Yannick | 8h |  |
| 67 | 4.14 | **Exportation** | 2d? | 2003-10-06 | 2003-10-07 | 64 |  |  |  |  |  | 25d | 0d |  | 16h |  |
| 68 | 4.14.1 | Construction | 1d? | 2003-10-06 | 2003-10-06 |  |  |  |  |  |  | 25d | 0d | Yannick | 8h |  |
| 69 | 4.14.2 | Test | 1d? | 2003-10-07 | 2003-10-07 | 68 |  |  |  |  |  | 25d |  | Yannick | 8h |  |
| 70 | 4.15 | **Enseignants** | 4d | 2003-08-12 A | 2003-08-15 A | 34 | 100% |  | 2003-07-03 | 2003-07-07 | 2d |  |  | Alex; Yannick | 96h | 96h |
| 71 | 4.15.1 | Menu | 1d | 2003-08-12 A | 2003-08-12 A |  | 100% |  |  |  |  |  |  | Alex; Yannick | 16h | 16h |
| 72 | 4.15.2 | **Actions enseignants** | 2d | 2003-08-14 A | 2003-08-15 A | 71 | 100% |  | 2003-07-07 | 2003-07-11 | 4d |  |  |  | 32h | 32h |
| 73 | 4.15.2.1 | Codage | 1d | 2003-08-14 A | 2003-08-14 A |  | 100% |  | 2003-07-07 | 2003-07-09 | 2d |  |  | Alex; Yannick | 16h | 16h |
| 74 | 4.15.2.2 | Test | 1d | 2003-08-15 A | 2003-08-15 A | 73 | 100% |  | 2003-07-09 | 2003-07-11 | 2d |  |  | Alex; Yannick | 16h | 16h |
| 75 | 4.16 | **Locaux** | 6d | 2003-08-18 A | 2003-08-25 | 70 | 20% | 4.8d | 2003-06-25 | 2003-06-27 | 2d | 1d | 0d | Alex | 80h | 16h |
| 76 | 4.16.1 | Menu | 1d | 2003-08-18 A | 2003-08-18 A |  | 100% |  |  |  |  |  |  | Alex | 8h | 8h |
| 77 | 4.16.2 | **Actions locaux** | 5d | 2003-08-19 | 2003-08-25 | 76 |  |  | 2003-06-27 | 2003-07-03 | 4d | 1d |  |  | 32h |  |
| 78 | 4.16.2.1 | Codage | 2d | 2003-08-19 | 2003-08-21 |  |  |  | 2003-06-27 | 2003-07-01 | 2d | 63d |  | Alex | 16h |  |
| 79 | 4.16.2.2 | Test | 2d | 2003-08-22 | 2003-08-25 |  |  |  | 2003-07-01 | 2003-07-03 | 2d | 1d |  | Alex | 16h |  |

| ID | WBS | Task | Type | Duration | Start | Finish | Predecessors | Complete | Remaining | Baseline start | Baseline finish | Baseline duration | Total slack | Free slack | Resources | Work | Actual work |
| --- | --- | --- | --- | --- | --- | --- | --- | --- | --- | --- | --- | --- | --- | --- | --- | --- | --- |
| 80 | 4.17 | **Événements** |  | 8d | 2003-08-26 A | 2003-09-04 | 75 | 20% | 6.4d | 2003-06-25 | 2003-06-27 | 2d | 0d |  | Alex | 72h | 8h |
| 81 | 4.17.1 | Menu |  | 1d | 2003-08-26 A | 2003-08-26 A |  | 100% |  |  |  |  |  |  |  |  |  |
| 82 | 4.17.2 | **Actions événements** |  | 6d | 2003-08-28 | 2003-09-04 | 81 |  |  | 2003-06-27 | 2003-07-03 | 4d | 0d |  |  | 32h |  |
| 83 | 4.17.2.1 | Codage |  | 2d | 2003-08-28 | 2003-08-29 |  |  |  | 2003-06-27 | 2003-07-01 | 2d | 60d |  | Alex | 16h |  |
| 84 | 4.17.2.2 | Test |  | 2d | 2003-09-02 | 2003-09-04 |  |  |  | 2003-07-01 | 2003-07-03 | 2d | 0d |  | Alex | 16h |  |
| 85 | 4.18 | **Groupe** |  | 8d? | 2003-09-05 A | 2003-09-16 | 80 | 50% | 4d? |  |  |  | 58d | 1d |  | 64h | 32h |
| 86 | 4.18.1 | Menu |  | 4d | 2003-09-05 A | 2003-09-11 A |  | 100% |  | 2003-07-11 | 2003-07-15 | 2d |  |  | Alex | 32h | 32h |
| 87 | 4.18.2 | **Actions groupes** |  | 3d? | 2003-09-12 | 2003-09-16 | 86 |  |  | 2003-07-15 | 2003-07-21 | 4d | 58d |  |  | 32h |  |
| 88 | 4.18.2.1 | Codage |  | 2d? | 2003-09-12 | 2003-09-15 |  |  |  | 2003-07-15 | 2003-07-17 | 2d | 59d |  | Alex | 16h |  |
| 89 | 4.18.2.2 | Test |  | 2d? | 2003-09-15 | 2003-09-16 |  |  |  | 2003-07-17 | 2003-07-21 | 2d | 58d |  | Alex | 16h |  |
| 90 | 4.19 | **Affectation manuelle** |  | 8d | 2003-09-18 | 2003-09-29 | 85 |  |  |  |  |  | 54d |  |  | 48h |  |
| 91 | 4.19.1 | Menu |  | 2d | 2003-09-18 | 2003-09-19 |  |  |  | 2003-07-11 | 2003-07-15 | 2d | 57d | 0d | Alex | 16h |  |
| 92 | 4.19.2 | **Actions affectation manuelle** |  | 6d | 2003-09-22 | 2003-09-29 | 91 |  |  | 2003-07-15 | 2003-07-21 | 4d | 54d |  |  | 32h |  |
| 93 | 4.19.2.1 | Codage |  | 2d | 2003-09-22 | 2003-09-23 |  |  |  | 2003-07-15 | 2003-07-17 | 2d | 58d |  | Alex | 16h |  |
| 94 | 4.19.2.2 | Test |  | 2d | 2003-09-26 | 2003-09-29 |  |  |  | 2003-07-17 | 2003-07-21 | 2d | 54d |  | Alex | 16h |  |
| 95 | 4.20 | **Menu Optimisation** |  | 5d? | 2003-09-26 | 2003-10-02 |  |  |  | 2003-07-21 | 2003-07-25 | 4d | 23d | 0d |  | 32h |  |
| 96 | 4.20.1 | Codage |  | 2d? | 2003-09-26 | 2003-09-29 |  |  |  | 2003-07-21 | 2003-07-23 | 2d | 24d | 0d | Alex | 16h |  |
| 97 | 4.20.2 | Test |  | 2d? | 2003-09-30 | 2003-10-02 | 96 |  |  | 2003-07-23 | 2003-07-25 | 2d | 23d |  | Alex | 16h |  |
| 98 | 4.21 | Automate menu |  | 10d | 2003-07-17 A | 2003-08-15 |  | 80% | 2d |  |  |  | 85d |  | Ruben | 80h | 64h |
| 99 | 4.22 | Status bar |  | 3d? | 2003-08-18 A | 2003-08-21 A | 98 | 100% |  |  |  |  |  |  | Ruben | 24h | 24h |
| 100 | 4.23 | Fin Livrable 3 | milestone | 0d | 2003-10-07 | 2003-10-07 | 67, 95, 99 |  |  | 2003-07-25 | 2003-07-25 | 0d | 26d | 1d |  |  |  |
| 101 | 5 | **Livrable 4 Construction Horaire** |  | 24d? | 2003-10-09 | 2003-11-11 | 100 |  |  | 2003-07-25 | 2003-08-20 | 18d? | 23d |  |  | 272h |  |
| 102 | 5.1 | **Affectation initiale 2** |  | 7d? | 2003-10-09 | 2003-10-17 |  |  |  | 2003-07-25 | 2003-08-04 | 6d? | 37d |  |  | 48h |  |
| 103 | 5.1.1 | Codage actions Affectation |  | 2d? | 2003-10-09 | 2003-10-10 |  |  |  | 2003-07-25 | 2003-07-29 | 2d? | 45d |  | Yannick | 16h |  |
| 104 | 5.1.2 | Test |  | 2d? | 2003-10-14 | 2003-10-16 |  |  |  | 2003-07-29 | 2003-07-31 | 2d? | 41d |  | Yannick | 16h |  |
| 105 | 5.1.3 | Calcul de conflits |  | 2d? | 2003-10-16 | 2003-10-17 |  |  |  | 2003-07-31 | 2003-08-04 | 2d? | 32d | 0d | Yannick | 16h |  |

| ID | WBS | Task | Type | Duration | Start | Finish | Predecessors | Baseline start | Baseline finish | Baseline duration | Total slack | Free slack | Resources | Work |
| --- | --- | --- | --- | --- | --- | --- | --- | --- | --- | --- | --- | --- | --- | --- |
| 106 | 5.2 | **Conflits enseignants** |  | 5d? | 2003-10-20 | 2003-10-24 | 105 | 2003-08-04 | 2003-08-08 | 4d? | 32d |  |  | 32h |
| 107 | 5.2.1 | Actions associées conflits enseigents |  | 2d? | 2003-10-20 | 2003-10-21 |  | 2003-08-04 | 2003-08-06 | 2d? | 33d | 1d | Yannick | 16h |
| 108 | 5.2.2 | Test |  | 2d? | 2003-10-23 | 2003-10-24 | 107 | 2003-08-06 | 2003-08-08 | 2d? | 32d | 0d | Yannick | 16h |
| 109 | 5.3 | **Conflits étudiants** |  | 4d? | 2003-10-30 | 2003-11-04 |  | 2003-08-08 | 2003-08-14 | 4d? | 28d |  |  | 32h |
| 110 | 5.3.1 | Actions associées conflits étudiants |  | 2d? | 2003-10-30 | 2003-10-31 |  | 2003-08-08 | 2003-08-12 | 2d? | 30d |  | Yannick | 16h |
| 111 | 5.3.2 | Test |  | 2d? | 2003-11-03 | 2003-11-04 |  | 2003-08-12 | 2003-08-14 | 2d? | 28d |  | Yannick | 16h |
| 112 | 5.4 | **Conflits locaux** |  | 4d? | 2003-11-06 | 2003-11-11 |  | 2003-08-14 | 2003-08-20 | 4d? | 23d |  |  | 32h |
| 113 | 5.4.1 | Actions associées conflits locaux |  | 2d? | 2003-11-06 | 2003-11-07 |  | 2003-08-14 | 2003-08-18 | 2d? | 25d |  | Yannick | 16h |
| 114 | 5.4.2 | Test |  | 2d? | 2003-11-10 | 2003-11-11 |  | 2003-08-18 | 2003-08-20 | 2d? | 23d |  | Yannick | 16h |
| 115 | 5.5 | **Actions associées conflits et interface** |  | 6d? | 2003-10-27 | 2003-11-03 | 108 | 2003-08-08 | 2003-08-14 | 4d? | 29d |  |  | 32h |
| 116 | 5.5.1 | Codage |  | 2d? | 2003-10-27 | 2003-10-28 |  | 2003-08-08 | 2003-08-12 | 2d? | 33d |  | Alex | 16h |
| 117 | 5.5.2 | Test |  | 2d? | 2003-10-31 | 2003-11-03 |  | 2003-08-12 | 2003-08-14 | 2d? | 29d |  | Alex | 16h |
| 118 | 5.6 | Dialoges amélioration manuelle |  | 2d? | 2003-10-09 | 2003-10-10 |  | 2003-07-25 | 2003-07-29 | 2d? | 45d |  | Alex | 16h |
| 119 | 5.7 | **Actions amélioration manuelle** |  | 4d? | 2003-10-14 | 2003-10-17 |  | 2003-07-29 | 2003-08-04 | 4d? | 40d |  |  | 32h |
| 120 | 5.7.1 | Codage |  | 2d? | 2003-10-14 | 2003-10-16 |  | 2003-07-29 | 2003-07-31 | 2d? | 41d |  | Alex | 16h |
| 121 | 5.7.2 | Test |  | 2d? | 2003-10-16 | 2003-10-17 |  | 2003-07-31 | 2003-08-04 | 2d? | 40d |  | Alex | 16h |
| 122 | 5.8 | Exporter données |  | 2d? | 2003-10-23 | 2003-10-24 |  | 2003-08-04 | 2003-08-06 | 2d? | 35d |  | Alex | 16h |
| 123 | 5.9 | **Actions exporter données** |  | 10d? | 2003-10-27 | 2003-11-07 |  | 2003-08-06 | 2003-08-18 | 8d? | 13d |  |  | 32h |
| 124 | 5.9.1 | Codage |  | 2d? | 2003-10-27 | 2003-10-28 |  | 2003-08-06 | 2003-08-08 | 2d? | 33d |  | Alex | 16h |
| 125 | 5.9.2 | Test |  | 2d? | 2003-11-06 | 2003-11-07 |  | 2003-08-14 | 2003-08-18 | 2d? | 5d | 0d | Alex | 16h |
| 126 | 5.10 | Fin Livrable 4 | milestone | 0d | 2003-11-07 | 2003-11-07 | 125 | 2003-08-18 | 2003-08-18 | 0d | 5d | 0d |  |  |
| 127 | 6 | **Livrable 5 Optimisation + Rapports** |  | 17d? | 2003-11-10 | 2003-12-02 | 126 | 2003-08-18 | 2003-09-05 | 14d? | 5d |  |  | 160h |
| 128 | 6.1 | Optimisation |  | 2d? | 2003-11-13 | 2003-11-14 |  | 2003-08-20 | 2003-08-22 | 2d? | 15d | 0d | Yannick | 16h |
| 129 | 6.2 | Codage |  | 2d? | 2003-11-17 | 2003-11-18 | 128 | 2003-08-22 | 2003-08-26 | 2d? | 18d |  | Yannick | 16h |
| 130 | 6.3 | Test |  | 2d? | 2003-11-20 | 2003-11-21 | 128 | 2003-08-26 | 2003-08-28 | 2d? | 15d |  | Yannick | 16h |
| 131 | 6.4 | Dialog de rapports |  | 2d? | 2003-11-10 | 2003-11-11 |  | 2003-08-18 | 2003-08-20 | 2d? | 5d | 1d | Alex | 16h |
| 132 | 6.5 | Rapport complet |  | 2d? | 2003-11-13 | 2003-11-14 | 131 | 2003-08-20 | 2003-08-22 | 2d? | 5d | 0d | Alex | 16h |
| 133 | 6.6 | Rapport conflits |  | 2d? | 2003-11-17 | 2003-11-18 | 132 | 2003-08-22 | 2003-08-26 | 2d? | 5d | 1d | Alex | 16h |
| 134 | 6.7 | Rapport importation |  | 2d? | 2003-11-20 | 2003-11-21 | 133 | 2003-08-26 | 2003-08-28 | 2d? | 5d | 0d | Alex | 16h |
| 135 | 6.8 | Rapport liste d'activités |  | 2d? | 2003-11-24 | 2003-11-25 | 134 | 2003-08-28 | 2003-09-01 | 2d? | 5d | 1d | Alex | 16h |
| 136 | 6.9 | Rapport groupes |  | 2d? | 2003-11-27 | 2003-11-28 | 135 | 2003-09-01 | 2003-09-03 | 2d? | 5d | 0d | Alex | 16h |
| 137 | 6.10 | Rapport complet & ranger |  | 2d? | 2003-12-01 | 2003-12-02 | 136 | 2003-09-03 | 2003-09-05 | 2d? | 5d | 0d | Alex | 16h |
| 138 | 6.11 | Fin Livrable 5 | milestone | 0d | 2003-12-02 | 2003-12-02 | 137 | 2003-09-05 | 2003-09-05 | 0d | 6d | 1d | Alex |  |

| ID | WBS | Task | Duration | Start | Finish | Predecessors | Baseline start | Baseline finish | Baseline duration | Total slack | Resources | Work |
| --- | --- | --- | --- | --- | --- | --- | --- | --- | --- | --- | --- | --- |
| 139 | 7 | **Livrable 6 Maintenance** | 7d? | 2003-12-04 | 2003-12-12 | 138 | 2003-09-05 | 2003-09-15 | 6d? | 0d |  | 48h |
| 140 | 7.1 | Compéter les menus | 2d? | 2003-12-04 | 2003-12-05 |  | 2003-09-05 | 2003-09-09 | 2d? | 5d | Alex | 16h |
| 141 | 7.2 | Compléter lesrapports | 2d? | 2003-12-08 | 2003-12-09 |  | 2003-09-09 | 2003-09-11 | 2d? | 3d | Alex | 16h |
| 142 | 7.3 | Ajout des fonctionnalitées | 2d? | 2003-12-11 | 2003-12-12 |  | 2003-09-11 | 2003-09-15 | 2d? | 0d | Alex | 16h |
